# 总进度

Schedule from a web Gantt chart, 2024-06-05 to 2024-11-14.
Every day is a working day

## Schedule

| ID | WBS | Task | Duration | Start | Finish | Complete | inPeople | Status |
| --- | --- | --- | --- | --- | --- | --- | --- | --- |
| 2 | 1 | 投标 | 8d | 2024-06-05 | 2024-06-12 | 100% | 行拓 | done |
| 3 | 2 | 合同签订 | 16d | 2024-06-13 | 2024-06-28 | 100% | 行拓 | done |
| 4 | 3 | 项目启动 | 11d | 2024-06-15 | 2024-06-25 | 100% | 行拓、通发、运维 | done |
| 5 | 4 | 需求分析 | 11d | 2024-06-15 | 2024-06-25 | 100% | 行拓、通发、厂家 |  |
| 6 | 5 | 方案设计确认 | 20d | 2024-06-21 | 2024-07-10 | 100% | 行拓、通发、厂家 |  |
| 7 | 6 | 设备采购 | 52d | 2024-06-08 | 2024-07-29 | 100% | 行拓、商合、厂家 |  |
| 8 | 7 | 设备到货 | 35d | 2024-06-25 | 2024-07-29 | 100% | 商合、厂家 |  |
| 9 | 8 | 首站定标 | 6d | 2024-07-01 | 2024-07-06 | 100% | 行拓、通发、厂家 | waiting |
| 10 | 9 | 塔体改造 | 30d | 2024-07-03 | 2024-08-01 |  | 通发 | waiting |
| 11 | 10 | 设备安装 | 41d | 2024-06-15 | 2024-07-25 |  | 通发 | waiting |
| 12 | 11 | 线路施工 | 20d | 2024-06-15 | 2024-07-04 |  | 运营商 | waiting |
| 13 | 12 | 平台部署 | 11d | 2024-06-24 | 2024-07-04 |  | 行拓、厂家 | waiting |
| 14 | 13 | 系统整体调试 | 27d | 2024-07-04 | 2024-07-30 |  | 行拓、厂家 | waiting |
| 15 | 14 | 项目初验 | 31d | 2024-07-31 | 2024-08-30 |  | 行拓、通发、运维、厂家 | waiting |
| 16 | 15 | 试运行 | 31d | 2024-08-30 | 2024-09-29 |  | 行拓、厂家 | waiting |
| 17 | 16 | 项目终验 | 16d | 2024-09-30 | 2024-10-15 |  | 行拓、厂家 | waiting |
| 18 | 17 | 竣工文档移交 | 10d | 2024-10-16 | 2024-10-25 |  | 行拓、通发 | waiting |
| 19 | 18 | 回款 | 30d | 2024-10-16 | 2024-11-14 |  | 行拓 | waiting |

Notes:
- 2: 中标及获取中标通知书
- 3: 市局、普朱、普陀、岱山、嵊泗，分别签订商务合同
- 4: 1.公司侧内部启动会 2.业主侧正式启动会
- 5: 1.需求分析、资料搜集 2.需求深化、实际点位勘测确认
- 6: 1.平台网络架构及组网方式 2.塔体改造及设备安装方案 3.点位覆盖范围确认
- 7: 1.标签评审 2.采购需求、方案提交 3.采购合同签订
- 8: 1.设备分批入库（非我方资产入库问题） / 2.监理清点数量及开箱验货
- 9: 1.联合部门、合作单位首站定标 / 2.对不同塔型确定改造安装标准 / 3.对引电、设备安装确定标准；
- 10: 塔上云台支撑底座改造
- 11: 1.平台服务器及配件安装 2.云台设备塔上安装
- 12: 1.平台汇聚链路及内部组网 2.云台前端电路开通
- 13: 1.私有云机房视频及存储服务器部署 2.客户视频功能平台部署
- 14: 1.平台整体架构功能调试 2.前端监控分析识别功能调试
- 15: 项目的各项功能初步验收
- 16: 项目的1个月时间试运行
- 17: 项目的最终验收
- 18: 资料文件汇总移交
- 19: 整体项目的各阶段回款
